# VÉLO MMO

How a schedule from MS Project changed from version to version. A marks actual dates.

## Version 1 (saved 2018-08-01, file 05-Ex‚cution-01-R‚f‚rence.mpp)

Note of the change: technique de gestion de projet

| ID | WBS | Task | Duration | Start | Finish | Predecessors | Total float | Constraint |
| --- | --- | --- | --- | --- | --- | --- | --- | --- |
| 1 | 1 | **Revue du projet** | 187.25d | 2018-04-03 08:00 | 2019-01-07 10:00 |  | 9.75d |  |
| 2 |  | Revue du projet 1 | 2h | 2018-04-03 08:00 | 2018-04-03 10:00 |  | 196.75d | start no earlier than 2018-04-02 08:00 |
| 3 |  | Revue du projet 2 | 2h | 2018-04-09 08:00 | 2018-04-09 10:00 |  | 192.75d | start no earlier than 2018-04-09 08:00 |
| 4 |  | Revue du projet 3 | 2h | 2018-04-16 08:00 | 2018-04-16 10:00 |  | 187.75d | start no earlier than 2018-04-16 08:00 |
| 5 |  | Revue du projet 4 | 2h | 2018-04-23 08:00 | 2018-04-23 10:00 |  | 182.75d | start no earlier than 2018-04-23 08:00 |
| 6 |  | Revue du projet 5 | 2h | 2018-04-30 08:00 | 2018-04-30 10:00 |  | 177.75d | start no earlier than 2018-04-30 08:00 |
| 7 |  | Revue du projet 6 | 2h | 2018-05-07 08:00 | 2018-05-07 10:00 |  | 173.75d | start no earlier than 2018-05-07 08:00 |
| 8 |  | Revue du projet 7 | 2h | 2018-05-14 08:00 | 2018-05-14 10:00 |  | 170.75d | start no earlier than 2018-05-14 08:00 |
| 9 |  | Revue du projet 8 | 2h | 2018-05-21 08:00 | 2018-05-21 10:00 |  | 165.75d | start no earlier than 2018-05-21 08:00 |
| 10 |  | Revue du projet 9 | 2h | 2018-05-28 08:00 | 2018-05-28 10:00 |  | 160.75d | start no earlier than 2018-05-28 08:00 |
| 11 |  | Revue du projet 10 | 2h | 2018-06-04 08:00 | 2018-06-04 10:00 |  | 155.75d | start no earlier than 2018-06-04 08:00 |
| 12 |  | Revue du projet 11 | 2h | 2018-06-11 08:00 | 2018-06-11 10:00 |  | 150.75d | start no earlier than 2018-06-11 08:00 |
| 13 |  | Revue du projet 12 | 2h | 2018-06-18 08:00 | 2018-06-18 10:00 |  | 145.75d | start no earlier than 2018-06-18 08:00 |
| 14 |  | Revue du projet 13 | 2h | 2018-06-25 08:00 | 2018-06-25 10:00 |  | 140.75d | start no earlier than 2018-06-25 08:00 |
| 15 |  | Revue du projet 14 | 2h | 2018-07-02 08:00 | 2018-07-02 10:00 |  | 135.75d | start no earlier than 2018-07-02 08:00 |
| 16 |  | Revue du projet 15 | 2h | 2018-07-09 08:00 | 2018-07-09 10:00 |  | 130.75d | start no earlier than 2018-07-09 08:00 |
| 17 |  | Revue du projet 16 | 2h | 2018-07-16 08:00 | 2018-07-16 10:00 |  | 125.75d | start no earlier than 2018-07-16 08:00 |
| 18 |  | Revue du projet 17 | 2h | 2018-07-23 08:00 | 2018-07-23 10:00 |  | 120.75d | start no earlier than 2018-07-23 08:00 |
| 19 |  | Revue du projet 18 | 2h | 2018-07-30 08:00 | 2018-07-30 10:00 |  | 115.75d | start no earlier than 2018-07-30 08:00 |
| 20 |  | Revue du projet 19 | 2h | 2018-08-08 08:00 | 2018-08-08 10:00 |  | 113.75d | start no earlier than 2018-08-06 08:00 |
| 21 |  | Revue du projet 20 | 2h | 2018-08-13 08:00 | 2018-08-13 10:00 |  | 110.75d | start no earlier than 2018-08-13 08:00 |
| 22 |  | Revue du projet 21 | 2h | 2018-08-20 08:00 | 2018-08-20 10:00 |  | 106.75d | start no earlier than 2018-08-20 08:00 |
| 23 |  | Revue du projet 22 | 2h | 2018-08-27 08:00 | 2018-08-27 10:00 |  | 101.75d | start no earlier than 2018-08-27 08:00 |
| 24 |  | Revue du projet 23 | 2h | 2018-09-03 08:00 | 2018-09-03 10:00 |  | 96.75d | start no earlier than 2018-09-03 08:00 |
| 25 |  | Revue du projet 24 | 2h | 2018-09-10 08:00 | 2018-09-10 10:00 |  | 91.75d | start no earlier than 2018-09-10 08:00 |
| 26 |  | Revue du projet 25 | 2h | 2018-09-17 08:00 | 2018-09-17 10:00 |  | 86.75d | start no earlier than 2018-09-17 08:00 |
| 27 |  | Revue du projet 26 | 2h | 2018-09-24 08:00 | 2018-09-24 10:00 |  | 81.75d | start no earlier than 2018-09-24 08:00 |
| 28 |  | Revue du projet 27 | 2h | 2018-10-01 08:00 | 2018-10-01 10:00 |  | 76.75d | start no earlier than 2018-10-01 08:00 |
| 29 |  | Revue du projet 28 | 2h | 2018-10-08 08:00 | 2018-10-08 10:00 |  | 71.75d | start no earlier than 2018-10-08 08:00 |
| 30 |  | Revue du projet 29 | 2h | 2018-10-15 08:00 | 2018-10-15 10:00 |  | 66.75d | start no earlier than 2018-10-15 08:00 |
| 31 |  | Revue du projet 30 | 2h | 2018-10-22 08:00 | 2018-10-22 10:00 |  | 61.75d | start no earlier than 2018-10-22 08:00 |
| 32 |  | Revue du projet 31 | 2h | 2018-10-29 08:00 | 2018-10-29 10:00 |  | 56.75d | start no earlier than 2018-10-29 08:00 |
| 33 |  | Revue du projet 32 | 2h | 2018-11-05 08:00 | 2018-11-05 10:00 |  | 52.75d | start no earlier than 2018-11-05 08:00 |
| 34 |  | Revue du projet 33 | 2h | 2018-11-12 08:00 | 2018-11-12 10:00 |  | 47.75d | start no earlier than 2018-11-12 08:00 |
| 35 |  | Revue du projet 34 | 2h | 2018-11-19 08:00 | 2018-11-19 10:00 |  | 42.75d | start no earlier than 2018-11-19 08:00 |
| 36 |  | Revue du projet 35 | 2h | 2018-11-26 08:00 | 2018-11-26 10:00 |  | 37.75d | start no earlier than 2018-11-26 08:00 |
| 37 |  | Revue du projet 36 | 2h | 2018-12-03 08:00 | 2018-12-03 10:00 |  | 32.75d | start no earlier than 2018-12-03 08:00 |
| 38 |  | Revue du projet 37 | 2h | 2018-12-10 08:00 | 2018-12-10 10:00 |  | 27.75d | start no earlier than 2018-12-10 08:00 |
| 39 |  | Revue du projet 38 | 2h | 2018-12-17 08:00 | 2018-12-17 10:00 |  | 22.75d | start no earlier than 2018-12-17 08:00 |
| 40 |  | Revue du projet 39 | 2h | 2018-12-24 08:00 | 2018-12-24 10:00 |  | 17.75d | start no earlier than 2018-12-24 08:00 |
| 41 |  | Revue du projet 40 | 2h | 2018-12-31 08:00 | 2018-12-31 10:00 |  | 13.75d | start no earlier than 2018-12-31 08:00 |
| 42 |  | Revue du projet 41 | 2h | 2019-01-07 08:00 | 2019-01-07 10:00 |  | 9.75d | start no earlier than 2019-01-07 08:00 |
| 43 | 2 | **Choix du sous-traitant** | 65d | 2018-04-03 08:00 | 2018-07-05 17:00 |  | -8d |  |
| 44 | 2.1 | **Appel d'offre et consultation** | 44d | 2018-04-03 08:00 | 2018-06-06 17:00 |  | -8d |  |
| 45 |  | Constitution du cahier des charges | 15d | 2018-04-03 08:00 | 2018-04-23 17:00 |  | -8d |  |
| 46 |  | Sélection des sous-traitants | 10d | 2018-04-24 08:00 | 2018-05-09 17:00 | 45 | -8d |  |
| 47 |  | Lancement des appels d’offres | 3d | 2018-05-11 08:00 | 2018-05-15 17:00 | 46 | -8d |  |
| 48 |  | Etablissement des grilles de sélection du sous-traitant | 5d | 2018-05-16 08:00 | 2018-05-22 17:00 | 47 | -3d |  |
| 49 |  | Définition du processus industriel | 10d | 2018-05-16 08:00 | 2018-05-29 17:00 | 48SS | -3d |  |
| 50 |  | Choix du processus d’approvisionnement logistique | 3d | 2018-05-30 08:00 | 2018-06-01 17:00 | 49 | -3d |  |
| 51 |  | Estimation de prix de référence (prix d’achat) | 3d | 2018-06-04 08:00 | 2018-06-06 17:00 | 50 | -3d |  |
| 52 |  | Retour des offres des sous-traitants | 0d | 2018-05-29 17:00 | 2018-05-29 17:00 | 47FS+10d | -8d |  |
| 53 | 2.3 | **Analyse et sélection du sous-traitant** | 27d | 2018-05-30 08:00 | 2018-07-05 17:00 |  | -8d |  |
| 54 |  | Revue des offres avec les sous-traitants | 11d | 2018-05-30 08:00 | 2018-06-13 17:00 | 52, 48 | -8d |  |
| 55 |  | Négociation avec les sous-traitants | 8d | 2018-06-14 08:00 | 2018-06-25 17:00 | 54, 51 | -8d |  |
| 56 |  | Sélection d’un sous-traitant | 2d | 2018-06-26 08:00 | 2018-06-27 17:00 | 55 | -8d |  |
| 57 |  | Lancement de la procédure d’agrément du sous-traitant | 3d | 2018-06-28 08:00 | 2018-07-02 17:00 | 56 | -8d |  |
| 58 |  | Lancement de l’analyse des risques | 3d | 2018-07-03 08:00 | 2018-07-05 17:00 | 57 | -8d |  |
| 59 |  | Signature du contrat d’achat | 0d | 2018-07-05 17:00 | 2018-07-05 17:00 | 58 | -8d |  |
| 60 | 3 | **Industrialisation et validation du sous-traitant** | 72d | 2018-07-06 08:00 | 2018-10-23 17:00 |  | -8d |  |
| 61 | 3.1 | **Préparation de l'industrialisation** | 19d | 2018-07-06 08:00 | 2018-08-08 17:00 |  | -8d |  |
| 62 |  | Réalisation du planning d’industrialisation | 5d | 2018-07-06 08:00 | 2018-07-12 17:00 | 59 | -8d |  |
| 63 |  | Planification des formations du personnel | 1d | 2018-07-13 08:00 | 2018-07-13 17:00 | 62 | -8d |  |
| 64 |  | Identification des besoins de qualification des installations | 2d | 2018-07-16 08:00 | 2018-07-17 17:00 | 63 | -8d |  |
| 65 |  | Initialisation du Dossier de validation industrielle (Budget, programme de validation, planning...) | 8d | 2018-07-18 08:00 | 2018-07-27 17:00 | 64 | -8d |  |
| 66 |  | Commande des pièces de validation (proto) | 1d | 2018-07-30 08:00 | 2018-07-30 17:00 | 65 | -8d |  |
| 67 |  | Téléchargement des logiciels de gestion des commandes | 3d | 2018-07-16 08:00 | 2018-07-18 17:00 | 64SS | 0d | start no earlier than 2018-07-16 08:00 |
| 68 |  | Installation des logiciels de gestion des commandes | 5d | 2018-07-19 08:00 | 2018-07-25 17:00 | 67 | 0d |  |
| 69 |  | Formation et certification du personnel du sous-traitant | 5d | 2018-07-26 08:00 | 2018-08-08 17:00 | 68 | 0d |  |
| 70 |  | Réception et validation du proto | 0d | 2018-08-21 17:00 | 2018-08-21 17:00 | 66FS+10d | -8d |  |

| ID | WBS | Task | Duration | Start | Finish | Predecessors | Total float | Constraint |
| --- | --- | --- | --- | --- | --- | --- | --- | --- |
| 71 | 3.3 | **Industrialisation** | 57d | 2018-07-27 08:00 | 2018-10-23 17:00 |  | -6d |  |
| 72 |  | Réalisation de missions technique en support du sous-traitant | 30d | 2018-07-27 08:00 | 2018-09-14 17:00 | 69FS-4d | 0d | finish no later than 2018-09-14 17:00 |
| 73 |  | Mise en place d’un plan d’assurance qualité produit. | 15d | 2018-08-22 08:00 | 2018-09-11 17:00 | 70 | -8d |  |
| 74 |  | Etudes de Reproductibilité et Répétabilité | 10d | 2018-09-12 08:00 | 2018-09-25 17:00 | 73 | -8d |  |
| 75 |  | Réalisation du premier article | 10d | 2018-09-26 08:00 | 2018-10-09 17:00 | 68, 74 | -8d |  |
| 76 |  | Contrôle des pièces de validation | 2d | 2018-10-15 08:00 | 2018-10-16 17:00 | 75 | -11d |  |
| 77 |  | Finalisation et validation du plan d’assurance qualité produit | 5d | 2018-10-17 08:00 | 2018-10-23 17:00 | 76 | -11d |  |
| 78 |  | Agrément du sous-traitant | 0d | 2018-10-23 17:00 | 2018-10-23 17:00 | 77 | -6d |  |
| 79 | 4 | **Mise en production** | 60d | 2018-10-24 08:00 | 2019-01-18 17:00 |  | -6d |  |
| 80 |  | Lancement des pièces de production | 20d | 2018-10-24 08:00 | 2018-11-21 17:00 | 78 | -7.12d |  |
| 81 |  | Mise en œuvre de l’assistance au sous-traitant | 60d | 2018-10-24 08:00 | 2019-01-18 17:00 | 72, 80SS | -6d |  |
| 82 |  | Livraison stabilisée en termes logistique et qualité | 40d | 2018-11-22 08:00 | 2019-01-18 17:00 | 80SS+1%, 81SS+10d | 0d | as late as possible |
| 83 |  | Obtention du label qualité | 0d | 2019-01-18 17:00 | 2019-01-18 17:00 | 82, 81, 80 | -6d |  |

## Version 2 (data date 2018-07-20, saved 2018-11-19, file 05-Ex‚cution-02-MAJ.mpp)

Note of the change: technique de gestion de projet

Last finish 2019-01-18 → 2019-02-19 (+32d). Complete tasks 0 → 21.

Added:

| ID | Task | Duration | Start | Finish | Constraint | Resources |
| --- | --- | --- | --- | --- | --- | --- |
| 1 | Pilotage du projet | 209d? | 2018-04-03 08:00 A | 2019-02-19 17:00 | finish no earlier than 2019-02-19 17:00 | Chef de projet [30%] |

Changed:

| ID | Task | Start | Finish | Duration | Complete | Total float | Predecessors | Other |
| --- | --- | --- | --- | --- | --- | --- | --- | --- |
| 2 | **Revue du projet** | 2018-04-03 08:00 → 2018-04-06 08:00 A (+3d) |  | 187.25d → 184.25d | 0% → 20% | 9.75d → 31.75d |  | baseline start 2018-04-03 08:00 → 2018-04-06 08:00 |
| 3 | Revue du projet 1 | 2018-04-03 08:00 → 2018-04-06 08:00 A (+3d) | 2018-04-03 10:00 → 2018-04-06 10:00 A (+3d) |  | 0% → 100% | 196.75d → none |  | baseline start 2018-04-03 08:00 → 2018-04-06 08:00; baseline finish 2018-04-03 10:00 → 2018-04-06 10:00 |
| 4 | Revue du projet 2 | 2018-04-09 08:00 A | 2018-04-09 10:00 A |  | 0% → 100% | 192.75d → none |  |  |
| 5 | Revue du projet 3 | 2018-04-16 08:00 A | 2018-04-16 10:00 A |  | 0% → 100% | 187.75d → none |  |  |
| 6 | Revue du projet 4 | 2018-04-23 08:00 A | 2018-04-23 10:00 A |  | 0% → 100% | 182.75d → none |  |  |
| 7 | Revue du projet 5 | 2018-04-30 08:00 A | 2018-04-30 10:00 A |  | 0% → 100% | 177.75d → none |  |  |
| 8 | Revue du projet 6 | 2018-05-07 08:00 A | 2018-05-07 10:00 A |  | 0% → 100% | 173.75d → none |  |  |
| 9 | Revue du projet 7 | 2018-05-14 08:00 A | 2018-05-14 10:00 A |  | 0% → 100% | 170.75d → none |  |  |
| 10 | Revue du projet 8 | 2018-05-21 08:00 → 2018-06-08 08:00 A (+18d) | 2018-05-21 10:00 → 2018-06-08 10:00 A (+18d) |  | 0% → 100% | 165.75d → none |  | constraint start no earlier than 2018-05-21 08:00 → start no earlier than 2018-06-01 17:00; baseline start 2018-05-21 08:00 → 2018-06-04 08:00; baseline finish 2018-05-21 10:00 → 2018-06-04 10:00 |
| 11 | Revue du projet 9 | 2018-05-28 08:00 → 2018-06-04 08:00 (+7d) | 2018-05-28 10:00 → 2018-06-04 10:00 (+7d) |  |  | 160.75d → 177.75d |  | constraint start no earlier than 2018-05-28 08:00 → start no earlier than 2018-06-01 17:00; baseline start 2018-05-28 08:00 → 2018-06-04 08:00; baseline finish 2018-05-28 10:00 → 2018-06-04 10:00 |
| 44 | **Choix du sous-traitant** | 2018-04-03 08:00 A | 2018-07-05 17:00 → 2018-07-13 08:00 (+8d) | 65d → 70d | 0% → 86% | -8d → 149d |  | baseline finish 2018-07-05 17:00 → 2018-07-16 17:00 |
| 45 | **Appel d'offre et consultation** | 2018-04-03 08:00 A | 2018-06-06 17:00 → 2018-06-19 17:00 (+13d) | 44d → 53d | 0% → 94% | -8d → 0d |  | baseline finish 2018-06-06 17:00 → 2018-06-19 17:00 |
| 46 | Constitution du cahier des charges | 2018-04-03 08:00 A | 2018-04-23 17:00 A |  | 0% → 100% | -8d → none |  | resources Acheteur; Ingénieur Qualité [50%]; Ingénieur Industrialisation [20%]; Responsable Logistique [10%]; Ingénieur Production [10%] → Acheteur; Ingénieur Qualité [50%]; Ingénieur Industrialisation [20%]; Ingénieur Production [10%]; Responsable Logistique [10%] |
| 47 | Sélection des sous-traitants | 2018-04-24 08:00 A | 2018-05-09 17:00 A |  | 0% → 100% | -8d → none |  |  |
| 48 | Lancement des appels d’offres | 2018-05-11 08:00 A | 2018-05-15 17:00 A |  | 0% → 100% | -8d → none |  |  |
| 49 | Etablissement des grilles de sélection du sous-traitant | 2018-05-16 08:00 A | 2018-05-22 17:00 → 2018-06-07 17:00 (+16d) | 5d → 8d | 0% → 80% | -3d → 0d |  | baseline finish 2018-05-22 17:00 → 2018-06-07 17:00 |
| 50 | Définition du processus industriel | 2018-05-16 08:00 A | 2018-05-29 17:00 → 2018-06-19 17:00 A (+21d) | 10d → 25d | 0% → 100% | -3d → none |  | resources Ingénieur Qualité [50%]; Ingénieur Industrialisation [50%]; Acheteur [10%] → Acheteur [10%]; Ingénieur Qualité [50%]; Ingénieur Industrialisation [50%]; baseline finish 2018-05-29 17:00 → 2018-06-19 17:00 |
| 51 | Choix du processus d’approvisionnement logistique | 2018-05-30 08:00 → 2018-06-01 08:00 A (+2d) | 2018-06-01 17:00 → 2018-06-05 17:00 A (+4d) |  | 0% → 100% | -3d → none | 50 → 50SS+3% | constraint none → start no earlier than 2018-06-01 17:00; resources Responsable Logistique; Ingénieur Qualité [50%]; Acheteur [10%] → Acheteur [10%]; Ingénieur Qualité [50%]; Responsable Logistique; baseline start 2018-05-30 08:00 → 2018-06-04 08:00; baseline finish 2018-06-01 17:00 → 2018-06-06 17:00 |
| 52 | Estimation de prix de référence (prix d’achat) | 2018-06-04 08:00 → 2018-06-07 08:00 A (+3d) | 2018-06-06 17:00 → 2018-06-11 17:00 A (+5d) |  | 0% → 100% | -3d → none |  | resources Acheteur; Ingénieur Production [10%]; Responsable Logistique [10%]; Ingénieur Industrialisation [10%] → Acheteur; Ingénieur Industrialisation [10%]; Ingénieur Production [10%]; Responsable Logistique [10%]; baseline start 2018-06-04 08:00 → 2018-06-07 08:00; baseline finish 2018-06-06 17:00 → 2018-06-11 17:00 |
| 53 | Retour des offres des sous-traitants | 2018-05-29 17:00 → 2018-06-04 08:00 A (+6d) | 2018-05-29 17:00 → 2018-06-04 08:00 A (+6d) |  | 0% → 100% | -8d → none |  | constraint none → start no earlier than 2018-06-01 17:00; baseline start 2018-05-29 17:00 → 2018-06-01 17:00; baseline finish 2018-05-29 17:00 → 2018-06-01 17:00 |
| 54 | **Analyse et sélection du sous-traitant** | 2018-05-30 08:00 → 2018-06-07 08:00 A (+8d) | 2018-07-05 17:00 → 2018-07-12 17:00 (+7d) | 27d → 26d | 0% → 68% | -8d → 149d |  | baseline start 2018-05-30 08:00 → 2018-06-08 08:00; baseline finish 2018-07-05 17:00 → 2018-07-16 17:00 |
| 55 | Revue des offres avec les sous-traitants | 2018-05-30 08:00 → 2018-06-07 08:00 A (+8d) | 2018-06-13 17:00 → 2018-06-25 17:00 (+12d) | 11d → 12d | 0% → 20% | -8d → 0d |  | constraint none → start no earlier than 2018-06-01 17:00; resources Acheteur; Ingénieur Qualité [20%]; Responsable Logistique [20%]; Ingénieur Production [20%]; Ingénieur Industrialisation [20%] → Acheteur; Ingénieur Qualité [20%]; Ingénieur Industrialisation [20%]; Ingénieur Production [20%]; Responsable Logistique [20%]; baseline start 2018-05-30 08:00 → 2018-06-08 08:00; baseline finish 2018-06-13 17:00 → 2018-06-22 17:00 |
| 56 | Négociation avec les sous-traitants | 2018-06-14 08:00 → 2018-06-27 08:00 A (+13d) | 2018-06-25 17:00 → 2018-07-10 17:00 (+15d) | 8d → 10d | 0% → 99% | -8d → 151d |  | baseline start 2018-06-14 08:00 → 2018-06-25 08:00; baseline finish 2018-06-25 17:00 → 2018-07-04 17:00 |
| 57 | Sélection d’un sous-traitant | 2018-06-26 08:00 → 2018-07-11 08:00 A (+15d) | 2018-06-27 17:00 → 2018-07-12 17:00 A (+15d) |  | 0% → 100% | -8d → none |  | resources Acheteur; Ingénieur Qualité [20%]; Responsable Logistique [20%]; Ingénieur Production [20%]; Ingénieur Industrialisation [20%] → Acheteur; Ingénieur Qualité [20%]; Ingénieur Industrialisation [20%]; Ingénieur Production [20%]; Responsable Logistique [20%]; baseline start 2018-06-26 08:00 → 2018-07-05 08:00; baseline finish 2018-06-27 17:00 → 2018-07-06 17:00 |
| 58 | Lancement de la procédure d’agrément du sous-traitant | 2018-06-28 08:00 → 2018-07-04 08:00 A (+6d) | 2018-07-02 17:00 → 2018-07-09 17:00 A (+7d) | 3d → 4d | 0% → 100% | -8d → none |  | baseline start 2018-06-28 08:00 → 2018-07-09 08:00; baseline finish 2018-07-02 17:00 → 2018-07-11 17:00 |
| 59 | Lancement de l’analyse des risques | 2018-07-03 08:00 → 2018-07-10 08:00 A (+7d) | 2018-07-05 17:00 → 2018-07-12 17:00 A (+7d) |  | 0% → 100% | -8d → none |  | baseline start 2018-07-03 08:00 → 2018-07-12 08:00; baseline finish 2018-07-05 17:00 → 2018-07-16 17:00 |
| 60 | Signature du contrat d’achat | 2018-07-05 17:00 → 2018-07-13 08:00 A (+8d) | 2018-07-05 17:00 → 2018-07-13 08:00 A (+8d) |  | 0% → 100% | -8d → none |  | baseline start 2018-07-05 17:00 → 2018-07-16 17:00; baseline finish 2018-07-05 17:00 → 2018-07-16 17:00 |
| 61 | **Industrialisation et validation du sous-traitant** | 2018-07-06 08:00 → 2018-07-16 08:00 A (+10d) | 2018-10-23 17:00 → 2018-10-26 17:00 (+3d) | 72d → 69d | 0% → 6% | -8d → -9d |  | baseline start 2018-07-06 08:00 → 2018-07-17 08:00; baseline finish 2018-10-23 17:00 → 2018-10-29 17:00 |
| 62 | **Préparation de l'industrialisation** | 2018-07-06 08:00 → 2018-07-16 08:00 A (+10d) | 2018-08-08 17:00 → 2018-08-17 17:00 (+9d) |  | 0% → 20% | -8d → -6d |  | baseline start 2018-07-06 08:00 → 2018-07-17 08:00; baseline finish 2018-08-08 17:00 → 2018-08-20 17:00 |
| 63 | Réalisation du planning d’industrialisation | 2018-07-06 08:00 → 2018-07-16 08:00 A (+10d) | 2018-07-12 17:00 → 2018-07-20 17:00 A (+8d) |  | 0% → 100% | -8d → none |  | resources Acheteur [50%]; Ingénieur Industrialisation; Responsable Logistique [50%]; Ingénieur Production [50%] → Acheteur [50%]; Ingénieur Industrialisation; Ingénieur Production [50%]; Responsable Logistique [50%]; baseline start 2018-07-06 08:00 → 2018-07-17 08:00; baseline finish 2018-07-12 17:00 → 2018-07-23 17:00 |
| 64 | Planification des formations du personnel | 2018-07-13 08:00 → 2018-07-20 08:00 A (+7d) | 2018-07-13 17:00 → 2018-07-23 17:00 A (+10d) |  | 0% → 100% | -8d → none |  | baseline start 2018-07-13 08:00 → 2018-07-24 08:00; baseline finish 2018-07-13 17:00 → 2018-07-24 17:00 |
| 65 | Identification des besoins de qualification des installations | 2018-07-16 08:00 → 2018-07-24 08:00 (+8d) | 2018-07-17 17:00 → 2018-07-25 17:00 (+8d) |  |  | -8d → -14d |  | baseline start 2018-07-16 08:00 → 2018-07-25 08:00; baseline finish 2018-07-17 17:00 → 2018-07-26 17:00 |
| 66 | Initialisation du Dossier de validation industrielle (Budget, programme de validation, planning...) | 2018-07-18 08:00 → 2018-07-26 08:00 (+8d) | 2018-07-27 17:00 → 2018-08-13 17:00 (+17d) |  |  | -8d → -14d |  | baseline start 2018-07-18 08:00 → 2018-07-27 08:00; baseline finish 2018-07-27 17:00 → 2018-08-14 17:00 |
| 67 | Commande des pièces de validation (proto) | 2018-07-30 08:00 → 2018-08-14 08:00 (+15d) | 2018-07-30 17:00 → 2018-08-14 17:00 (+15d) |  |  | -8d → -14d |  | baseline start 2018-07-30 08:00 → 2018-08-16 08:00; baseline finish 2018-07-30 17:00 → 2018-08-16 17:00 |
| 68 | Téléchargement des logiciels de gestion des commandes | 2018-07-16 08:00 → 2018-07-24 08:00 (+8d) | 2018-07-18 17:00 → 2018-07-26 17:00 (+8d) |  |  | 0d → -6d |  | baseline start 2018-07-16 08:00 → 2018-07-25 08:00; baseline finish 2018-07-18 17:00 → 2018-07-27 17:00 |
| 69 | Installation des logiciels de gestion des commandes | 2018-07-19 08:00 → 2018-07-27 08:00 (+8d) | 2018-07-25 17:00 → 2018-08-09 17:00 (+15d) |  |  | 0d → -6d |  | baseline start 2018-07-19 08:00 → 2018-07-30 08:00; baseline finish 2018-07-25 17:00 → 2018-08-10 17:00 |
| 70 | Formation et certification du personnel du sous-traitant | 2018-07-26 08:00 → 2018-08-10 08:00 (+15d) | 2018-08-08 17:00 → 2018-08-17 17:00 (+9d) |  |  | 0d → -6d |  | baseline start 2018-07-26 08:00 → 2018-08-13 08:00; baseline finish 2018-08-08 17:00 → 2018-08-20 17:00 |
| 71 | Réception et validation du proto | 2018-08-21 17:00 → 2018-08-29 17:00 (+8d) | 2018-08-21 17:00 → 2018-08-29 17:00 (+8d) |  |  | -8d → -14d |  | baseline start 2018-08-21 17:00 → 2018-08-30 17:00; baseline finish 2018-08-21 17:00 → 2018-08-30 17:00 |
| 72 | **Industrialisation** |  | 2018-10-23 17:00 → 2018-10-26 17:00 (+3d) | 57d → 60d |  | -6d → -9d |  | baseline finish 2018-10-23 17:00 → 2018-10-29 17:00 |
| 74 | Mise en place d’un plan d’assurance qualité produit. | 2018-08-22 08:00 → 2018-08-30 08:00 (+8d) | 2018-09-11 17:00 → 2018-09-19 17:00 (+8d) |  |  | -8d → -14d |  | baseline start 2018-08-22 08:00 → 2018-08-31 08:00; baseline finish 2018-09-11 17:00 → 2018-09-20 17:00 |
| 75 | Etudes de Reproductibilité et Répétabilité | 2018-09-12 08:00 → 2018-09-20 08:00 (+8d) | 2018-09-25 17:00 → 2018-10-03 17:00 (+8d) |  |  | -8d → -14d |  | baseline start 2018-09-12 08:00 → 2018-09-21 08:00; baseline finish 2018-09-25 17:00 → 2018-10-04 17:00 |
| 76 | Réalisation du premier article | 2018-09-26 08:00 → 2018-10-04 08:00 (+8d) | 2018-10-09 17:00 → 2018-10-17 17:00 (+8d) |  |  | -8d → -14d |  | baseline start 2018-09-26 08:00 → 2018-10-05 08:00; baseline finish 2018-10-09 17:00 → 2018-10-18 17:00 |
| 77 | Contrôle des pièces de validation | 2018-10-15 08:00 → 2018-10-18 08:00 (+3d) | 2018-10-16 17:00 → 2018-10-19 17:00 (+3d) |  |  | -11d → -14d |  | baseline start 2018-10-15 08:00 → 2018-10-19 08:00; baseline finish 2018-10-16 17:00 → 2018-10-22 17:00 |
| 78 | Finalisation et validation du plan d’assurance qualité produit | 2018-10-17 08:00 → 2018-10-22 08:00 (+5d) | 2018-10-23 17:00 → 2018-10-26 17:00 (+3d) |  |  | -11d → -14d |  | baseline start 2018-10-17 08:00 → 2018-10-23 08:00; baseline finish 2018-10-23 17:00 → 2018-10-29 17:00 |
| 79 | Agrément du sous-traitant | 2018-10-23 17:00 → 2018-10-26 17:00 (+3d) | 2018-10-23 17:00 → 2018-10-26 17:00 (+3d) |  |  | -6d → -9d |  | baseline start 2018-10-23 17:00 → 2018-10-29 17:00; baseline finish 2018-10-23 17:00 → 2018-10-29 17:00 |
| 80 | **Mise en production** | 2018-10-24 08:00 → 2018-10-29 08:00 (+5d) | 2019-01-18 17:00 → 2019-01-23 17:00 (+5d) |  |  | -6d → -9d |  | baseline start 2018-10-24 08:00 → 2018-10-30 08:00; baseline finish 2019-01-18 17:00 → 2019-02-19 17:00 |
| 81 | Lancement des pièces de production | 2018-10-24 08:00 → 2018-10-29 08:00 (+5d) | 2018-11-21 17:00 → 2018-11-26 17:00 (+5d) |  |  | -7.12d → -11.25d |  | resources Acheteur; Technicien Production; Ingénieur Production; Ingénieur Qualité; Sous-traitant → Acheteur; Ingénieur Production; Ingénieur Qualité; Sous-traitant; Technicien Production; baseline start 2018-10-24 08:00 → 2018-10-30 08:00; baseline finish 2018-11-21 17:00 → 2018-11-27 17:00 |
| 82 | Mise en œuvre de l’assistance au sous-traitant | 2018-10-24 08:00 → 2018-10-29 08:00 (+5d) | 2019-01-18 17:00 → 2019-01-23 17:00 (+5d) |  |  | -6d → -9d |  | baseline start 2018-10-24 08:00 → 2018-10-30 08:00; baseline finish 2019-01-18 17:00 → 2019-01-24 17:00 |
| 83 | Livraison stabilisée en termes logistique et qualité | 2018-11-22 08:00 → 2018-11-27 08:00 (+5d) | 2019-01-18 17:00 → 2019-01-23 17:00 (+5d) |  |  |  |  | baseline start 2018-11-22 08:00 → 2018-12-24 08:00; baseline finish 2019-01-18 17:00 → 2019-02-19 17:00 |
| 84 | Obtention du label qualité | 2019-01-18 17:00 → 2019-01-23 17:00 (+5d) | 2019-01-18 17:00 → 2019-01-23 17:00 (+5d) |  |  | -6d → -9d |  | baseline start 2019-01-18 17:00 → 2019-02-19 17:00; baseline finish 2019-01-18 17:00 → 2019-02-19 17:00 |
